# Hospital Finder Project

Schedule from MS Project, 2014-05-19 to 2014-08-11, costs in ₫.

## Calendars

- Standard: Mon-Fri 08:00-12:00, 13:00-17:00; Sat-Sun off.

## Resources

| Resource | Rate |
| --- | --- |
| Lê Phước Việt | 8000 |
| Nguyễn Xuân Sơn | 8000 |
| Vũ Nhật Anh Khoa | 8000 |
| Dương Thị Hoàng Anh | 8000 |

## Schedule

| ID | WBS | Task | Duration | Start | Finish | Predecessors | Total slack | Free slack | Constraint | Resources | Work | Cost |
| --- | --- | --- | --- | --- | --- | --- | --- | --- | --- | --- | --- | --- |
| 1 | 1 | **Analyze business and investigate technology** | 6d | 2014-05-19 08:00 | 2014-05-26 17:00 |  |  |  |  |  | 184h | 1,472,000 |
| 2 | 1.1 | Determine project scope | 1d | 2014-05-19 08:00 | 2014-05-19 17:00 |  | 0d |  |  | Lê Phước Việt; Vũ Nhật Anh Khoa; Nguyễn Xuân Sơn; Dương Thị Hoàng Anh | 32h | 256,000 |
| 3 | 1.2 | Create general use case diagram | 1d | 2014-05-20 08:00 | 2014-05-20 17:00 | 2 | 0d |  |  | Dương Thị Hoàng Anh | 8h | 64,000 |
| 4 | 1.3 | Create report 2 | 1d | 2014-05-20 08:00 | 2014-05-20 17:00 | 2 | 4d |  |  | Nguyễn Xuân Sơn | 8h | 64,000 |
| 5 | 1.4 | Research responsive web layout | 1d | 2014-05-20 08:00 | 2014-05-20 17:00 | 2 | 4d |  |  | Lê Phước Việt | 8h | 64,000 |
| 6 | 1.5 | Create ERD | 2d | 2014-05-21 08:00 | 2014-05-22 17:00 | 3 | 0d |  |  | Nguyễn Xuân Sơn | 16h | 128,000 |
| 7 | 1.6 | Research Google API | 2d | 2014-05-21 08:00 | 2014-05-22 17:00 | 3 | 2d |  |  | Lê Phước Việt | 16h | 128,000 |
| 8 | 1.7 | Research Facebook API | 2d | 2014-05-21 08:00 | 2014-05-22 17:00 | 3 | 2d |  |  | Dương Thị Hoàng Anh; Vũ Nhật Anh Khoa | 32h | 256,000 |
| 9 | 1.8 | Research search and word break down algorithm | 2d | 2014-05-23 08:00 | 2014-05-26 17:00 | 6 | 0d |  |  | Lê Phước Việt; Nguyễn Xuân Sơn; Dương Thị Hoàng Anh; Vũ Nhật Anh Khoa | 64h | 512,000 |
| 10 | 2 | **Use case specification** | 4d | 2014-05-27 08:00 | 2014-05-30 17:00 |  |  |  |  |  | 114.5h | 916,000 |
| 11 | 2.1 | Login | 2.5h | 2014-05-27 08:00 | 2014-05-27 10:30 | 9 | 3.06d | 0d |  | Dương Thị Hoàng Anh | 2.5h | 20,000 |
| 12 | 2.2 | Change password | 2.5h | 2014-05-27 10:30 | 2014-05-27 14:00 | 11 | 3.06d | 0d |  | Dương Thị Hoàng Anh | 2.5h | 20,000 |
| 13 | 2.3 | Reclaim forgot password | 2.5h | 2014-05-27 14:00 | 2014-05-27 16:30 | 12 | 3.06d | 0.06d |  | Dương Thị Hoàng Anh | 2.5h | 20,000 |
| 14 | 2.4 | Create hospital users' account | 4h | 2014-05-27 13:00 | 2014-05-27 17:00 | 9 | 54d |  | finish no earlier than 2014-05-27 17:00 | Lê Phước Việt | 4h | 32,000 |
| 15 | 2.5 | Update hospital users's account | 4h | 2014-05-27 08:00 | 2014-05-27 12:00 |  | 51.56d | 0.5d | start no earlier than 2014-05-27 08:00 | Lê Phước Việt | 4h | 32,000 |
| 16 | 2.6 | Deactivate normal or hospital users' accounts | 2.5h | 2014-05-27 08:00 | 2014-05-27 10:30 | 9 | 3.06d | 0d |  | Vũ Nhật Anh Khoa | 2.5h | 20,000 |
| 17 | 2.7 | View list of users or hospital users | 2.5h | 2014-05-27 10:30 | 2014-05-27 14:00 | 16 | 3.06d | 0d |  | Vũ Nhật Anh Khoa | 2.5h | 20,000 |
| 18 | 2.8 | View hospitals or clinics information | 2.5h | 2014-05-27 14:00 | 2014-05-27 16:30 | 17 | 3.06d | 0.06d |  | Vũ Nhật Anh Khoa | 2.5h | 20,000 |
| 19 | 2.9 | Update hospitals or clinics information | 2.5h | 2014-05-27 08:00 | 2014-05-27 10:30 | 9 | 3.06d | 0d |  | Nguyễn Xuân Sơn | 2.5h | 20,000 |
| 20 | 2.10 | Comment | 2.5h | 2014-05-27 10:30 | 2014-05-27 14:00 | 19 | 3.06d | 0d |  | Nguyễn Xuân Sơn | 2.5h | 20,000 |
| 21 | 2.11 | Reply comment | 2.5h | 2014-05-27 14:00 | 2014-05-27 16:30 | 20 | 3.06d | 0.06d |  | Nguyễn Xuân Sơn | 2.5h | 20,000 |
| 22 | 2.12 | Rating | 2.5h | 2014-05-28 08:00 | 2014-05-28 10:30 | 15 | 51.06d | 0d | start no earlier than 2014-05-28 08:00 | Lê Phước Việt | 2.5h | 20,000 |
| 23 | 2.13 | Create feedback | 2.5h | 2014-05-28 10:30 | 2014-05-28 14:00 | 22 | 51.06d | 0d | start no earlier than 2014-05-28 08:00 | Lê Phước Việt | 2.5h | 20,000 |
| 24 | 2.14 | View list of feedbacks | 2.5h | 2014-05-28 14:00 | 2014-05-28 16:30 | 23 | 51.06d | 0.06d | start no earlier than 2014-05-28 08:00 | Lê Phước Việt | 2.5h | 20,000 |
| 25 | 2.15 | Import list of hospitals or clinics by Excel | 2.5h | 2014-05-28 08:00 | 2014-05-28 10:30 | 13 | 51.38d | 0d | start no earlier than 2014-05-28 08:00 | Dương Thị Hoàng Anh | 2.5h | 20,000 |
| 26 | 2.16 | Create appointments online | 2.5h | 2014-05-28 10:30 | 2014-05-28 14:00 | 25 | 51.38d | 0.38d | start no earlier than 2014-05-28 08:00 | Dương Thị Hoàng Anh | 2.5h | 20,000 |
| 27 | 2.17 | View list of appointments | 2.5h | 2014-05-28 08:00 | 2014-05-28 10:30 | 18 | 53.06d | 0d | start no earlier than 2014-05-28 08:00 | Vũ Nhật Anh Khoa | 2.5h | 20,000 |
| 28 | 2.18 | View administrator statistics | 2.5h | 2014-05-28 10:30 | 2014-05-28 14:00 | 27 | 53.06d | 0d | start no earlier than 2014-05-28 08:00 | Vũ Nhật Anh Khoa | 2.5h | 20,000 |
| 29 | 2.19 | View hospital statistics | 2.5h | 2014-05-28 14:00 | 2014-05-28 16:30 | 28 | 53.06d |  | start no earlier than 2014-05-28 08:00 | Vũ Nhật Anh Khoa | 2.5h | 20,000 |
| 30 | 2.20 | Create class diagram | 1d | 2014-05-28 08:00 | 2014-05-28 17:00 | 21 | 51d | 0d | start no earlier than 2014-05-28 08:00 | Nguyễn Xuân Sơn | 8h | 64,000 |
| 31 | 2.21 | Review and update use case | 1d | 2014-05-29 08:00 | 2014-05-29 17:00 | 26, 24, 30, 18 | 51d | 0d | start no earlier than 2014-05-29 08:00 | Dương Thị Hoàng Anh; Lê Phước Việt; Nguyễn Xuân Sơn; Vũ Nhật Anh Khoa | 32h | 256,000 |
| 32 | 2.22 | Create architecture diagram | 1d | 2014-05-30 08:00 | 2014-05-30 17:00 | 31 | 51d |  | start no earlier than 2014-05-30 08:00 | Dương Thị Hoàng Anh | 8h | 64,000 |
| 33 | 2.23 | Create report 3 | 1d | 2014-05-30 08:00 | 2014-05-30 17:00 | 31 | 51d |  | start no earlier than 2014-05-30 08:00 | Nguyễn Xuân Sơn | 8h | 64,000 |
| 34 | 2.24 | Create website layout | 1d | 2014-05-30 08:00 | 2014-05-30 17:00 | 31 | 51d |  | start no earlier than 2014-05-30 08:00 | Lê Phước Việt | 8h | 64,000 |

| ID | WBS | Task | Duration | Start | Finish | Predecessors | Total slack | Free slack | Constraint | Resources | Work | Cost |
| --- | --- | --- | --- | --- | --- | --- | --- | --- | --- | --- | --- | --- |
| 35 | 3 | **Sequence diagrams specification** | 5d | 2014-06-09 08:00 | 2014-06-13 17:00 |  |  |  |  |  | 128h | 1,024,000 |
| 36 | 3.1 | Study User Control, javascript, css | 1d | 2014-06-09 08:00 | 2014-06-09 17:00 |  | 2d | 0d |  | Dương Thị Hoàng Anh; Lê Phước Việt; Nguyễn Xuân Sơn; Vũ Nhật Anh Khoa | 32h | 256,000 |
| 37 | 3.2 | Create web user interface | 1d | 2014-06-10 08:00 | 2014-06-10 17:00 | 36 | 2.25d | 0d |  | Lê Phước Việt; Nguyễn Xuân Sơn | 16h | 128,000 |
| 38 | 3.3 | Review web user interface | 3h | 2014-06-10 08:00 | 2014-06-10 11:00 | 36 | 44.62d |  | start no earlier than 2014-06-10 08:00 | Vũ Nhật Anh Khoa | 3h | 24,000 |
| 39 | 3.4 | Login | 1h | 2014-06-10 11:00 | 2014-06-10 12:00 | 38 | 3d | 0d | start no earlier than 2014-06-10 08:00 | Vũ Nhật Anh Khoa | 1h | 8,000 |
| 40 | 3.5 | Change password | 1h | 2014-06-10 13:00 | 2014-06-10 14:00 | 39 | 3d | 0d |  | Vũ Nhật Anh Khoa | 1h | 8,000 |
| 41 | 3.6 | Reclaim forgot password | 1h | 2014-06-10 14:00 | 2014-06-10 15:00 | 40 | 3d | 0d |  | Vũ Nhật Anh Khoa | 1h | 8,000 |
| 42 | 3.7 | Create hospital users' account | 1h | 2014-06-10 15:00 | 2014-06-10 16:00 | 41 | 3d | 0d |  | Vũ Nhật Anh Khoa | 1h | 8,000 |
| 43 | 3.8 | Update hospital users's account | 1h | 2014-06-10 16:00 | 2014-06-10 17:00 | 42 | 3d |  |  | Vũ Nhật Anh Khoa | 1h | 8,000 |
| 44 | 3.9 | Review web user interface | 2h | 2014-06-10 08:00 | 2014-06-10 10:00 | 36 | 2.75d | 0d | start no earlier than 2014-06-10 08:00 | Dương Thị Hoàng Anh | 2h | 16,000 |
| 45 | 3.10 | Deactivate normal or hospital users' accounts | 1h | 2014-06-10 10:00 | 2014-06-10 11:00 | 44 | 2.75d | 0d | start no earlier than 2014-06-10 08:00 | Dương Thị Hoàng Anh | 1h | 8,000 |
| 46 | 3.11 | View list of users or hospital users | 1h | 2014-06-10 11:00 | 2014-06-10 12:00 | 45 | 2.75d | 0d |  | Dương Thị Hoàng Anh | 1h | 8,000 |
| 47 | 3.12 | View hospitals or clinics information | 1h | 2014-06-10 13:00 | 2014-06-10 14:00 | 46 | 2.75d | 0d |  | Dương Thị Hoàng Anh | 1h | 8,000 |
| 48 | 3.13 | Update hospitals or clinics information | 1h | 2014-06-10 14:00 | 2014-06-10 15:00 | 47 | 2.75d | 0d |  | Dương Thị Hoàng Anh | 1h | 8,000 |
| 49 | 3.14 | Comment | 1h | 2014-06-10 15:00 | 2014-06-10 16:00 | 48 | 2.75d | 0d |  | Dương Thị Hoàng Anh | 1h | 8,000 |
| 50 | 3.15 | Reply comment | 1h | 2014-06-10 16:00 | 2014-06-10 17:00 | 49 | 2.75d | 0d | finish no earlier than 2014-06-02 17:00 | Dương Thị Hoàng Anh | 1h | 8,000 |
| 51 | 3.16 | Review web user interface | 2h | 2014-06-11 08:00 | 2014-06-11 10:00 | 50 | 2.75d |  |  | Lê Phước Việt | 2h | 16,000 |
| 52 | 3.17 | Rating | 1.5h | 2014-06-11 08:00 | 2014-06-11 09:30 | 37 | 2.25d | 0d | start no earlier than 2014-06-11 08:00 | Lê Phước Việt | 1.5h | 12,000 |
| 53 | 3.18 | Create feedback | 1.5h | 2014-06-11 09:30 | 2014-06-11 11:00 | 52 | 2.25d | 0d |  | Lê Phước Việt | 1.5h | 12,000 |
| 54 | 3.19 | View list of feedbacks | 1.5h | 2014-06-11 11:00 | 2014-06-11 13:30 | 53 | 2.25d | 0d |  | Lê Phước Việt | 1.5h | 12,000 |
| 55 | 3.20 | Import list of hospitals or clinics by Excel | 1.5h | 2014-06-11 13:30 | 2014-06-11 15:00 | 54 | 2.25d |  |  | Lê Phước Việt | 1.5h | 12,000 |
| 56 | 3.21 | Review web user interface | 2h | 2014-06-11 08:00 | 2014-06-11 10:00 | 37 | 43.75d |  | start no earlier than 2014-06-11 08:00 | Nguyễn Xuân Sơn | 2h | 16,000 |
| 57 | 3.22 | Create appointments online | 1.5h | 2014-06-11 08:00 | 2014-06-11 09:30 | 37 | 2.25d | 0d | start no earlier than 2014-06-11 08:00 | Nguyễn Xuân Sơn | 1.5h | 12,000 |
| 58 | 3.23 | View list of appointments | 1.5h | 2014-06-11 09:30 | 2014-06-11 11:00 | 57 | 2.25d | 0d |  | Nguyễn Xuân Sơn | 1.5h | 12,000 |
| 59 | 3.24 | View administrator statistics | 1.5h | 2014-06-11 11:00 | 2014-06-11 13:30 | 58 | 2.25d | 0d |  | Nguyễn Xuân Sơn | 1.5h | 12,000 |
| 60 | 3.25 | View hospital statistics | 1.5h | 2014-06-11 13:30 | 2014-06-11 15:00 | 59 | 2.25d |  |  | Nguyễn Xuân Sơn | 1.5h | 12,000 |
| 61 | 3.26 | Review and update use case | 1d | 2014-06-12 08:00 | 2014-06-12 17:00 | 42, 49, 54, 59 | 37.5d | 0d | start no earlier than 2014-06-12 08:00 | Dương Thị Hoàng Anh; Lê Phước Việt; Nguyễn Xuân Sơn; Vũ Nhật Anh Khoa | 32h | 256,000 |
| 62 | 3.27 | Create report 4 | 1d | 2014-06-13 08:00 | 2014-06-13 17:00 | 61 | 37.5d | 1d | start no earlier than 2014-06-13 08:00 | Lê Phước Việt; Nguyễn Xuân Sơn | 16h | 128,000 |

| ID | WBS | Task | Duration | Start | Finish | Predecessors | Total slack | Free slack | Constraint | Resources | Work | Cost |
| --- | --- | --- | --- | --- | --- | --- | --- | --- | --- | --- | --- | --- |
| 63 | 4 | **Implementation** | 41d | 2014-06-16 08:00 | 2014-08-11 17:00 |  |  |  |  |  | 176h | 1,408,000 |
| 64 | 4.1 | Review web user interface | 1d | 2014-06-16 08:00 | 2014-06-16 17:00 |  | 28.5d | 0d |  | Dương Thị Hoàng Anh; Lê Phước Việt; Nguyễn Xuân Sơn; Vũ Nhật Anh Khoa | 32h | 256,000 |
| 65 | 4.2 | Review web user interface | 2h | 2014-06-17 08:00 | 2014-06-17 10:00 | 64 | 28.5d | 0d |  | Dương Thị Hoàng Anh | 2h | 16,000 |
| 66 | 4.3 | Login | 2h | 2014-06-17 10:00 | 2014-06-17 12:00 | 65 | 28.5d | 0d | start no earlier than 2014-06-17 08:00 | Dương Thị Hoàng Anh | 2h | 16,000 |
| 67 | 4.4 | Change password | 2h | 2014-06-17 13:00 | 2014-06-17 15:00 | 66 | 28.5d | 0d |  | Dương Thị Hoàng Anh | 2h | 16,000 |
| 68 | 4.5 | Reclaim forgot password | 2h | 2014-06-17 15:00 | 2014-06-17 17:00 | 67 | 28.5d | 0d |  | Dương Thị Hoàng Anh | 2h | 16,000 |
| 69 | 4.6 | Review web user interface | 2h | 2014-06-17 08:00 | 2014-06-17 10:00 | 88 | 36d | 0d |  | Vũ Nhật Anh Khoa | 2h | 16,000 |
| 70 | 4.7 | Create hospital users' account | 2h | 2014-06-17 10:00 | 2014-06-17 12:00 | 69 | 29d | 0d | start no earlier than 2014-06-17 08:00 | Vũ Nhật Anh Khoa | 2h | 16,000 |
| 71 | 4.8 | Update hospital users's account | 2h | 2014-06-17 13:00 | 2014-06-17 15:00 | 70 | 29d | 0d |  | Vũ Nhật Anh Khoa | 2h | 16,000 |
| 72 | 4.9 | Deactivate normal or hospital users' accounts | 2h | 2014-06-17 15:00 | 2014-06-17 17:00 | 71 | 29d | 0d |  | Vũ Nhật Anh Khoa | 2h | 16,000 |
| 73 | 4.10 | Review web user interface | 4h | 2014-06-17 08:00 | 2014-06-17 12:00 | 89 | 39.5d |  |  | Lê Phước Việt | 4h | 32,000 |
| 74 | 4.11 | View list of users or hospital users | 2h | 2014-06-17 08:00 | 2014-06-17 10:00 | 62 | 29.5d | 0d | start no earlier than 2014-06-17 08:00 | Lê Phước Việt | 2h | 16,000 |
| 75 | 4.12 | View hospitals or clinics information | 2h | 2014-06-17 10:00 | 2014-06-17 12:00 | 74 | 29.5d | 1d | start no earlier than 2014-06-06 08:00 | Lê Phước Việt | 2h | 16,000 |
| 76 | 4.13 | Review web user interface | 4h | 2014-06-17 08:00 | 2014-06-17 12:00 | 64 | 39.5d |  |  | Nguyễn Xuân Sơn | 4h | 32,000 |
| 77 | 4.14 | Update hospitals or clinics information | 2h | 2014-06-17 08:00 | 2014-06-17 10:00 | 62 | 36.5d | 0d | start no earlier than 2014-06-17 08:00 | Nguyễn Xuân Sơn | 2h | 16,000 |
| 78 | 4.15 | Rating | 2h | 2014-06-17 10:00 | 2014-06-17 12:00 | 77 | 29.5d | 1d | start no earlier than 2014-06-06 08:00 | Nguyễn Xuân Sơn | 2h | 16,000 |
| 79 | 4.16 | Review web user interface | 4h | 2014-06-18 08:00 | 2014-06-18 12:00 | 72 | 38d | 0d | start no earlier than 2014-06-18 08:00 | Vũ Nhật Anh Khoa | 4h | 32,000 |
| 80 | 4.17 | Comment | 2h | 2014-06-18 13:00 | 2014-06-18 15:00 | 79 | 38d | 0d | start no earlier than 2014-06-06 08:00 | Vũ Nhật Anh Khoa | 2h | 16,000 |
| 81 | 4.18 | Reply comment | 2h | 2014-06-18 15:00 | 2014-06-18 17:00 | 80 | 38d |  | start no earlier than 2014-06-06 08:00 | Vũ Nhật Anh Khoa | 2h | 16,000 |
| 82 | 4.19 | Review web user interface | 4h | 2014-06-18 08:00 | 2014-06-18 12:00 | 68 | 28.25d | 0d |  | Dương Thị Hoàng Anh | 4h | 32,000 |
| 83 | 4.20 | Create feedback | 2h | 2014-06-18 13:00 | 2014-06-18 15:00 | 82 | 28.25d | 0d | start no earlier than 2014-06-18 08:00 | Dương Thị Hoàng Anh | 2h | 16,000 |
| 84 | 4.21 | View list of feedbacks | 2h | 2014-06-18 15:00 | 2014-06-18 17:00 | 83 | 38d |  | start no earlier than 2014-06-06 08:00 | Dương Thị Hoàng Anh | 2h | 16,000 |
| 85 | 4.22 | Review code | 3d | 2014-06-19 08:00 | 2014-06-23 17:00 | 83, 75, 78, 72 | 35d |  | start no earlier than 2014-06-19 08:00 | Dương Thị Hoàng Anh; Lê Phước Việt; Nguyễn Xuân Sơn; Vũ Nhật Anh Khoa | 96h | 768,000 |
| 86 | 4.23 | Search hospitals | 1d? | 2014-06-16 08:00 | 2014-06-16 17:00 |  | 40d |  |  |  |  |  |
| 87 | 4.24 | Import list of hospitals or clinics by Excel | 3.5d | 2014-06-16 08:00 | 2014-06-19 12:00 |  | 37.5d |  |  |  |  |  |
| 88 | 4.25 | Create appointments online | 1d? | 2014-06-16 08:00 | 2014-06-16 17:00 |  | 36d | 0d |  |  |  |  |
| 89 | 4.26 | View list of appointments | 1d? | 2014-06-16 08:00 | 2014-06-16 17:00 |  | 39.5d | 0d |  |  |  |  |
| 90 | 4.27 | View administrator statistics | 1d? | 2014-06-16 08:00 | 2014-06-16 17:00 |  | 40d |  |  |  |  |  |
| 91 | 4.28 | View hospital statistics | 1d? | 2014-06-16 08:00 | 2014-06-16 17:00 |  | 40d |  |  |  |  |  |

| ID | WBS | Task | Duration | Start | Finish | Total slack |
| --- | --- | --- | --- | --- | --- | --- |
| 92 | 5 | **Testing** | 1d? | 2014-05-27 08:00 | 2014-05-27 17:00 |  |
| 93 | 5.1 | **Unit test** | 1d? | 2014-05-27 08:00 | 2014-05-27 17:00 | 0d |
| 94 | 5.1.1 | Login | 1d? | 2014-05-27 08:00 | 2014-05-27 17:00 | 0d |
| 95 | 5.1.2 | Change password | 1d? | 2014-05-27 08:00 | 2014-05-27 17:00 | 0d |
| 96 | 5.1.3 | Reclaim forgot password | 1d? | 2014-05-27 08:00 | 2014-05-27 17:00 | 0d |
| 97 | 5.1.4 | Create hospital users' account | 1d? | 2014-05-27 08:00 | 2014-05-27 17:00 | 0d |
| 98 | 5.1.5 | Update hospital users's account | 1d? | 2014-05-27 08:00 | 2014-05-27 17:00 | 0d |
| 99 | 5.1.6 | Deactivate normal or hospital users' accounts | 1d? | 2014-05-27 08:00 | 2014-05-27 17:00 | 0d |
| 100 | 5.1.7 | View list of users or hospital users | 1d? | 2014-05-27 08:00 | 2014-05-27 17:00 | 0d |
| 101 | 5.1.8 | View hospitals or clinics information | 1d? | 2014-05-27 08:00 | 2014-05-27 17:00 | 0d |
| 102 | 5.1.9 | Update hospitals or clinics information | 1d? | 2014-05-27 08:00 | 2014-05-27 17:00 | 0d |
| 103 | 5.1.10 | Comment | 1d? | 2014-05-27 08:00 | 2014-05-27 17:00 | 0d |
| 104 | 5.1.11 | Reply comment | 1d? | 2014-05-27 08:00 | 2014-05-27 17:00 | 0d |
| 105 | 5.1.12 | Rating | 1d? | 2014-05-27 08:00 | 2014-05-27 17:00 | 0d |
| 106 | 5.1.13 | Create feedback | 1d? | 2014-05-27 08:00 | 2014-05-27 17:00 | 0d |
| 107 | 5.1.14 | View list of feedbacks | 1d? | 2014-05-27 08:00 | 2014-05-27 17:00 | 0d |
| 108 | 5.1.15 | Import list of hospitals or clinics by Excel | 1d? | 2014-05-27 08:00 | 2014-05-27 17:00 | 0d |
| 109 | 5.1.16 | Create appointments online | 1d? | 2014-05-27 08:00 | 2014-05-27 17:00 | 0d |
| 110 | 5.1.17 | View list of appointments | 1d? | 2014-05-27 08:00 | 2014-05-27 17:00 | 0d |
| 111 | 5.1.18 | View administrator statistics | 1d? | 2014-05-27 08:00 | 2014-05-27 17:00 | 0d |
| 112 | 5.1.19 | View hospital statistics | 1d? | 2014-05-27 08:00 | 2014-05-27 17:00 | 0d |
| 113 | 5.1.20 | Create architecture diagram | 1d? | 2014-05-27 08:00 | 2014-05-27 17:00 | 0d |
| 114 | 5.2 | Integration test | 1d? | 2014-05-27 08:00 | 2014-05-27 17:00 | 0d |
| 115 | 5.3 | System test | 1d? | 2014-05-27 08:00 | 2014-05-27 17:00 | 0d |
| 116 | 5.4 | Create report 5 | 1d? | 2014-05-27 08:00 | 2014-05-27 17:00 | 0d |

| ID | WBS | Task | Duration | Start | Finish | Total slack |
| --- | --- | --- | --- | --- | --- | --- |
| 117 | 6 | **Prepare for preparation** | 1d? | 2014-05-27 08:00 | 2014-05-27 17:00 |  |
| 118 | 6.1 | Create report 6 | 1d? | 2014-05-27 08:00 | 2014-05-27 17:00 | 0d |
| 119 | 6.2 | Integrate reports | 1d? | 2014-05-27 08:00 | 2014-05-27 17:00 | 0d |
| 120 | 6.3 | Dummy presentation | 1d? | 2014-05-27 08:00 | 2014-05-27 17:00 | 0d |
