# Hospital Finder Project

Schedule from MS Project, 2014-05-19 to 2014-07-31, costs in ₫.

## Calendars

- Standard: Mon-Fri 08:00-12:00, 13:00-17:00; Sat-Sun off.

## Resources

| Resource | Rate |
| --- | --- |
| Lê Phước Việt | 8000 |
| Nguyễn Xuân Sơn | 8000 |
| Vũ Nhật Anh Khoa | 8000 |
| Dương Thị Hoàng Anh | 8000 |

## Schedule

| ID | WBS | Task | Duration | Start | Finish | Predecessors | Total slack | Free slack | Constraint | Resources | Work | Cost |
| --- | --- | --- | --- | --- | --- | --- | --- | --- | --- | --- | --- | --- |
| 1 | 1 | **Analyze business and investigate technology** | 6d | 2014-05-19 08:00 | 2014-05-26 17:00 |  |  |  |  |  | 184h | 1,472,000 |
| 2 | 1.1 | Determine project scope | 1d | 2014-05-19 08:00 | 2014-05-19 17:00 |  | 0d |  |  | Lê Phước Việt; Vũ Nhật Anh Khoa; Nguyễn Xuân Sơn; Dương Thị Hoàng Anh | 32h | 256,000 |
| 3 | 1.2 | Create general use case diagram | 1d | 2014-05-20 08:00 | 2014-05-20 17:00 | 2 | 0d |  |  | Dương Thị Hoàng Anh | 8h | 64,000 |
| 4 | 1.3 | Create report 2 | 1d | 2014-05-20 08:00 | 2014-05-20 17:00 | 2 | 4d |  |  | Nguyễn Xuân Sơn | 8h | 64,000 |
| 5 | 1.4 | Research responsive web layout | 1d | 2014-05-20 08:00 | 2014-05-20 17:00 | 2 | 4d |  |  | Lê Phước Việt | 8h | 64,000 |
| 6 | 1.5 | Create ERD | 2d | 2014-05-21 08:00 | 2014-05-22 17:00 | 3 | 0d |  |  | Nguyễn Xuân Sơn | 16h | 128,000 |
| 7 | 1.6 | Research Google API | 2d | 2014-05-21 08:00 | 2014-05-22 17:00 | 3 | 2d |  |  | Lê Phước Việt | 16h | 128,000 |
| 8 | 1.7 | Research Facebook API | 2d | 2014-05-21 08:00 | 2014-05-22 17:00 | 3 | 2d |  |  | Dương Thị Hoàng Anh; Vũ Nhật Anh Khoa | 32h | 256,000 |
| 9 | 1.8 | Research search and word break down algorithm | 2d | 2014-05-23 08:00 | 2014-05-26 17:00 | 6 | 0d |  |  | Lê Phước Việt; Nguyễn Xuân Sơn; Dương Thị Hoàng Anh; Vũ Nhật Anh Khoa | 64h | 512,000 |
| 10 | 2 | **Use case specification** | 4d | 2014-05-27 08:00 | 2014-05-30 17:00 |  |  |  |  |  | 114.5h | 916,000 |
| 11 | 2.1 | Login | 2.5h | 2014-05-27 08:00 | 2014-05-27 10:30 | 7 | 3.69d | 2.69d |  | Dương Thị Hoàng Anh | 2.5h | 20,000 |
| 12 | 2.2 | Change password | 2.5h | 2014-05-27 08:00 | 2014-05-27 10:30 | 7 | 3.69d |  |  | Dương Thị Hoàng Anh | 2.5h | 20,000 |
| 13 | 2.3 | Reclaim forgot password | 2.5h | 2014-05-27 08:00 | 2014-05-27 10:30 | 7 | 3.69d |  |  | Dương Thị Hoàng Anh | 2.5h | 20,000 |
| 14 | 2.4 | Create hospital users' account | 4h | 2014-05-27 13:00 | 2014-05-27 17:00 | 7 | 46d | 6d | finish no earlier than 2014-05-27 17:00 | Lê Phước Việt | 4h | 32,000 |
| 15 | 2.5 | Update hospital users's account | 4h | 2014-05-27 08:00 | 2014-05-27 12:00 | 7 | 47d | 7.5d | start no earlier than 2014-05-27 08:00 | Lê Phước Việt | 4h | 32,000 |
| 16 | 2.6 | Deactivate normal or hospital users' accounts | 2.5h | 2014-05-27 08:00 | 2014-05-27 10:30 | 7 | 3.69d |  |  | Vũ Nhật Anh Khoa | 2.5h | 20,000 |
| 17 | 2.7 | View list of users or hospital users | 2.5h | 2014-05-27 08:00 | 2014-05-27 10:30 | 7 | 3.69d |  |  | Vũ Nhật Anh Khoa | 2.5h | 20,000 |
| 18 | 2.8 | View hospitals or clinics information | 2.5h | 2014-05-27 08:00 | 2014-05-27 10:30 | 7 | 3.69d |  |  | Vũ Nhật Anh Khoa | 2.5h | 20,000 |
| 19 | 2.9 | Update hospitals or clinics information | 2.5h | 2014-05-27 08:00 | 2014-05-27 10:30 | 7 | 3.69d |  |  | Nguyễn Xuân Sơn | 2.5h | 20,000 |
| 20 | 2.10 | Comment | 2.5h | 2014-05-27 08:00 | 2014-05-27 10:30 | 7 | 3.69d |  |  | Nguyễn Xuân Sơn | 2.5h | 20,000 |
| 21 | 2.11 | Reply comment | 2.5h | 2014-05-27 08:00 | 2014-05-27 10:30 | 7 | 3.69d |  |  | Nguyễn Xuân Sơn | 2.5h | 20,000 |
| 22 | 2.12 | Rating | 2.5h | 2014-05-28 08:00 | 2014-05-28 10:30 | 8 | 46.69d |  | start no earlier than 2014-05-28 08:00 | Lê Phước Việt | 2.5h | 20,000 |
| 23 | 2.13 | Create feedback | 2.5h | 2014-05-28 08:00 | 2014-05-28 10:30 | 8 | 46.69d |  | start no earlier than 2014-05-28 08:00 | Lê Phước Việt | 2.5h | 20,000 |
| 24 | 2.14 | View list of feedbacks | 2.5h | 2014-05-28 08:00 | 2014-05-28 10:30 | 8 | 46.69d |  | start no earlier than 2014-05-28 08:00 | Lê Phước Việt | 2.5h | 20,000 |
| 25 | 2.15 | Import list of hospitals or clinics by Excel | 2.5h | 2014-05-28 08:00 | 2014-05-28 10:30 | 8 | 46.69d |  | start no earlier than 2014-05-28 08:00 | Dương Thị Hoàng Anh | 2.5h | 20,000 |
| 26 | 2.16 | Create appointments online | 2.5h | 2014-05-28 08:00 | 2014-05-28 10:30 | 8 | 46.69d |  | start no earlier than 2014-05-28 08:00 | Dương Thị Hoàng Anh | 2.5h | 20,000 |
| 27 | 2.17 | View list of appointments | 2.5h | 2014-05-28 08:00 | 2014-05-28 10:30 | 8 | 46.69d |  | start no earlier than 2014-05-28 08:00 | Vũ Nhật Anh Khoa | 2.5h | 20,000 |
| 28 | 2.18 | View administrator statistics | 2.5h | 2014-05-28 08:00 | 2014-05-28 10:30 | 8 | 46.69d |  | start no earlier than 2014-05-28 08:00 | Vũ Nhật Anh Khoa | 2.5h | 20,000 |
| 29 | 2.19 | View hospital statistics | 2.5h | 2014-05-28 08:00 | 2014-05-28 10:30 | 8 | 46.69d |  | start no earlier than 2014-05-28 08:00 | Vũ Nhật Anh Khoa | 2.5h | 20,000 |
| 30 | 2.20 | Create class diagram | 1d | 2014-05-28 08:00 | 2014-05-28 17:00 | 8 | 46d |  | start no earlier than 2014-05-28 08:00 | Nguyễn Xuân Sơn | 8h | 64,000 |
| 31 | 2.21 | Review and update use case | 1d | 2014-05-29 08:00 | 2014-05-29 17:00 | 9 | 45d |  | start no earlier than 2014-05-29 08:00 | Dương Thị Hoàng Anh; Lê Phước Việt; Nguyễn Xuân Sơn; Vũ Nhật Anh Khoa | 32h | 256,000 |
| 32 | 2.22 | Create architecture diagram | 1d | 2014-05-30 08:00 | 2014-05-30 17:00 | 11 | 44d |  | start no earlier than 2014-05-30 08:00 | Dương Thị Hoàng Anh | 8h | 64,000 |
| 33 | 2.23 | Create report 3 | 1d | 2014-05-30 08:00 | 2014-05-30 17:00 | 11 | 44d |  | start no earlier than 2014-05-30 08:00 | Nguyễn Xuân Sơn | 8h | 64,000 |
| 34 | 2.24 | Create website layout | 1d | 2014-05-30 08:00 | 2014-05-30 17:00 | 11 | 44d |  | start no earlier than 2014-05-30 08:00 | Lê Phước Việt | 8h | 64,000 |

| ID | WBS | Task | Duration | Start | Finish | Predecessors | Total slack | Constraint | Resources | Work | Cost |
| --- | --- | --- | --- | --- | --- | --- | --- | --- | --- | --- | --- |
| 35 | 3 | **Sequence diagrams specification** | 4d | 2014-06-02 08:00 | 2014-06-05 17:00 |  |  |  |  | 111.8h | 894,400 |
| 36 | 3.1 | Login | 1.6h | 2014-06-02 08:00 | 2014-06-02 09:36 | 12 | 3.8d |  | Vũ Nhật Anh Khoa | 1.6h | 12,800 |
| 37 | 3.2 | Change password | 1.6h | 2014-06-02 08:00 | 2014-06-02 09:36 | 12 | 3.8d |  | Vũ Nhật Anh Khoa | 1.6h | 12,800 |
| 38 | 3.3 | Reclaim forgot password | 1.6h | 2014-06-02 08:00 | 2014-06-02 09:36 | 12 | 3.8d |  | Vũ Nhật Anh Khoa | 1.6h | 12,800 |
| 39 | 3.4 | Create hospital users' account | 1.6h | 2014-06-02 08:00 | 2014-06-02 09:36 | 12 | 3.8d |  | Vũ Nhật Anh Khoa | 1.6h | 12,800 |
| 40 | 3.5 | Update hospital users's account | 1.6h | 2014-06-02 08:00 | 2014-06-02 09:36 | 12 | 3.8d |  | Vũ Nhật Anh Khoa | 1.6h | 12,800 |
| 41 | 3.6 | Deactivate normal or hospital users' accounts | 1.3h | 2014-06-02 08:00 | 2014-06-02 09:18 | 12 | 3.84d |  | Dương Thị Hoàng Anh | 1.3h | 10,400 |
| 42 | 3.7 | View list of users or hospital users | 1.3h | 2014-06-02 08:00 | 2014-06-02 09:18 | 12 | 3.84d |  | Dương Thị Hoàng Anh | 1.3h | 10,400 |
| 43 | 3.8 | View hospitals or clinics information | 1.3h | 2014-06-02 08:00 | 2014-06-02 09:18 | 12 | 3.84d |  | Dương Thị Hoàng Anh | 1.3h | 10,400 |
| 44 | 3.9 | Update hospitals or clinics information | 1.3h | 2014-06-02 08:00 | 2014-06-02 09:18 | 12 | 3.84d |  | Dương Thị Hoàng Anh | 1.3h | 10,400 |
| 45 | 3.10 | Comment | 1.3h | 2014-06-02 08:00 | 2014-06-02 09:18 | 12 | 3.84d |  | Dương Thị Hoàng Anh | 1.3h | 10,400 |
| 46 | 3.11 | Reply comment | 1.3h | 2014-06-02 08:00 | 2014-06-02 09:18 | 12 | 3.84d |  | Dương Thị Hoàng Anh | 1.3h | 10,400 |
| 47 | 3.12 | Rating | 2h | 2014-06-02 08:00 | 2014-06-02 10:00 | 12 | 3.75d |  | Lê Phước Việt | 2h | 16,000 |
| 48 | 3.13 | Create feedback | 2h | 2014-06-02 08:00 | 2014-06-02 10:00 | 12 | 3.75d |  | Lê Phước Việt | 2h | 16,000 |
| 49 | 3.14 | View list of feedbacks | 2h | 2014-06-02 08:00 | 2014-06-02 10:00 | 12 | 3.75d |  | Lê Phước Việt | 2h | 16,000 |
| 50 | 3.15 | Import list of hospitals or clinics by Excel | 2h | 2014-06-02 08:00 | 2014-06-02 10:00 | 12 | 3.75d |  | Lê Phước Việt | 2h | 16,000 |
| 51 | 3.16 | Create appointments online | 2h | 2014-06-02 08:00 | 2014-06-02 10:00 | 12 | 3.75d |  | Nguyễn Xuân Sơn | 2h | 16,000 |
| 52 | 3.17 | View list of appointments | 2h | 2014-06-02 08:00 | 2014-06-02 10:00 | 12 | 3.75d |  | Nguyễn Xuân Sơn | 2h | 16,000 |
| 53 | 3.18 | View administrator statistics | 2h | 2014-06-02 08:00 | 2014-06-02 10:00 | 12 | 3.75d |  | Nguyễn Xuân Sơn | 2h | 16,000 |
| 54 | 3.19 | View hospital statistics | 2h | 2014-06-02 08:00 | 2014-06-02 10:00 | 12 | 3.75d |  | Nguyễn Xuân Sơn | 2h | 16,000 |
| 55 | 3.20 | Review and update use case | 2d | 2014-06-03 08:00 | 2014-06-04 17:00 | 13 | 41d | start no earlier than 2014-06-03 08:00 | Dương Thị Hoàng Anh; Lê Phước Việt; Nguyễn Xuân Sơn; Vũ Nhật Anh Khoa | 64h | 512,000 |
| 56 | 3.21 | Create report 4 | 1d | 2014-06-05 08:00 | 2014-06-05 17:00 | 14 | 40d | start no earlier than 2014-06-05 08:00 | Lê Phước Việt; Nguyễn Xuân Sơn | 16h | 128,000 |
| 57 | 4 | **Implementation** | 41d | 2014-06-05 08:00 | 2014-07-31 17:00 |  |  |  |  | 311.5h | 2,492,000 |
| 58 | 4.1 | Login | 2.5h | 2014-06-05 08:00 | 2014-06-05 10:30 | 14 | 40.69d |  | Dương Thị Hoàng Anh | 2.5h | 20,000 |
| 59 | 4.2 | Change password | 2.5h | 2014-06-05 08:00 | 2014-06-05 10:30 | 14 | 40.69d |  | Dương Thị Hoàng Anh | 2.5h | 20,000 |
| 60 | 4.3 | Reclaim forgot password | 2.5h | 2014-06-05 08:00 | 2014-06-05 10:30 | 14 | 40.69d |  | Dương Thị Hoàng Anh | 2.5h | 20,000 |
| 61 | 4.4 | Create hospital users' account | 4h | 2014-06-05 08:00 | 2014-06-05 12:00 | 14 | 40.5d |  | Vũ Nhật Anh Khoa | 4h | 32,000 |
| 62 | 4.5 | Update hospital users's account | 2h | 2014-06-05 08:00 | 2014-06-05 10:00 | 14 | 40.75d |  | Vũ Nhật Anh Khoa | 2h | 16,000 |
| 63 | 4.6 | Deactivate normal or hospital users' accounts | 2h | 2014-06-05 08:00 | 2014-06-05 10:00 | 14 | 40.75d |  | Vũ Nhật Anh Khoa | 2h | 16,000 |
| 64 | 4.7 | View list of users or hospital users | 4h | 2014-06-06 08:00 | 2014-06-06 12:00 | 15 | 39.5d | start no earlier than 2014-06-06 08:00 | Lê Phước Việt | 4h | 32,000 |
| 65 | 4.8 | View hospitals or clinics information | 4h | 2014-06-06 08:00 | 2014-06-06 12:00 | 15 | 39.5d | start no earlier than 2014-06-06 08:00 | Lê Phước Việt | 4h | 32,000 |
| 66 | 4.9 | Update hospitals or clinics information | 4h | 2014-06-06 08:00 | 2014-06-06 12:00 | 15 | 39.5d | start no earlier than 2014-06-06 08:00 | Nguyễn Xuân Sơn | 4h | 32,000 |
| 67 | 4.10 | Rating | 4h | 2014-06-06 08:00 | 2014-06-06 12:00 | 15 | 39.5d | start no earlier than 2014-06-06 08:00 | Nguyễn Xuân Sơn | 4h | 32,000 |
| 68 | 4.11 | Comment | 4h | 2014-06-06 08:00 | 2014-06-06 12:00 | 15 | 39.5d | start no earlier than 2014-06-06 08:00 | Vũ Nhật Anh Khoa | 4h | 32,000 |
| 69 | 4.12 | Reply comment | 4h | 2014-06-06 08:00 | 2014-06-06 12:00 | 15 | 39.5d | start no earlier than 2014-06-06 08:00 | Vũ Nhật Anh Khoa | 4h | 32,000 |
| 70 | 4.13 | Create feedback | 4h | 2014-06-06 08:00 | 2014-06-06 12:00 | 15 | 39.5d | start no earlier than 2014-06-06 08:00 | Dương Thị Hoàng Anh | 4h | 32,000 |
| 71 | 4.14 | View list of feedbacks | 4h | 2014-06-06 08:00 | 2014-06-06 12:00 | 15 | 39.5d | start no earlier than 2014-06-06 08:00 | Dương Thị Hoàng Anh | 4h | 32,000 |
| 72 | 4.15 | Review code | 3d | 2014-06-09 08:00 | 2014-06-11 17:00 | 16 | 36d | start no earlier than 2014-06-09 08:00 | Dương Thị Hoàng Anh; Lê Phước Việt; Nguyễn Xuân Sơn; Vũ Nhật Anh Khoa | 96h | 768,000 |
| 73 | 4.16 | Search hospitals | 7d | 2014-06-12 08:00 | 2014-06-20 17:00 | 17 | 29d | start no earlier than 2014-06-12 08:00 | Lê Phước Việt; Nguyễn Xuân Sơn | 112h | 896,000 |
| 74 | 4.17 | Import list of hospitals or clinics by Excel | 3.5d | 2014-06-12 08:00 | 2014-06-17 12:00 | 17 | 32.5d | start no earlier than 2014-06-12 08:00 | Dương Thị Hoàng Anh; Vũ Nhật Anh Khoa | 56h | 448,000 |
| 75 | 4.18 | Create appointments online | 1d? | 2014-06-05 08:00 | 2014-06-05 17:00 |  | 40d |  |  |  |  |
| 76 | 4.19 | View list of appointments | 1d? | 2014-06-05 08:00 | 2014-06-05 17:00 |  | 40d |  |  |  |  |
| 77 | 4.20 | View administrator statistics | 1d? | 2014-06-05 08:00 | 2014-06-05 17:00 |  | 40d |  |  |  |  |
| 78 | 4.21 | View hospital statistics | 1d? | 2014-06-05 08:00 | 2014-06-05 17:00 |  | 40d |  |  |  |  |

| ID | WBS | Task | Duration | Start | Finish | Total slack |
| --- | --- | --- | --- | --- | --- | --- |
| 79 | 5 | **Testing** | 1d? | 2014-05-27 08:00 | 2014-05-27 17:00 |  |
| 80 | 5.1 | **Unit test** | 1d? | 2014-05-27 08:00 | 2014-05-27 17:00 | 0d |
| 81 | 5.1.1 | Login | 1d? | 2014-05-27 08:00 | 2014-05-27 17:00 | 0d |
| 82 | 5.1.2 | Change password | 1d? | 2014-05-27 08:00 | 2014-05-27 17:00 | 0d |
| 83 | 5.1.3 | Reclaim forgot password | 1d? | 2014-05-27 08:00 | 2014-05-27 17:00 | 0d |
| 84 | 5.1.4 | Create hospital users' account | 1d? | 2014-05-27 08:00 | 2014-05-27 17:00 | 0d |
| 85 | 5.1.5 | Update hospital users's account | 1d? | 2014-05-27 08:00 | 2014-05-27 17:00 | 0d |
| 86 | 5.1.6 | Deactivate normal or hospital users' accounts | 1d? | 2014-05-27 08:00 | 2014-05-27 17:00 | 0d |
| 87 | 5.1.7 | View list of users or hospital users | 1d? | 2014-05-27 08:00 | 2014-05-27 17:00 | 0d |
| 88 | 5.1.8 | View hospitals or clinics information | 1d? | 2014-05-27 08:00 | 2014-05-27 17:00 | 0d |
| 89 | 5.1.9 | Update hospitals or clinics information | 1d? | 2014-05-27 08:00 | 2014-05-27 17:00 | 0d |
| 90 | 5.1.10 | Comment | 1d? | 2014-05-27 08:00 | 2014-05-27 17:00 | 0d |
| 91 | 5.1.11 | Reply comment | 1d? | 2014-05-27 08:00 | 2014-05-27 17:00 | 0d |
| 92 | 5.1.12 | Rating | 1d? | 2014-05-27 08:00 | 2014-05-27 17:00 | 0d |
| 93 | 5.1.13 | Create feedback | 1d? | 2014-05-27 08:00 | 2014-05-27 17:00 | 0d |
| 94 | 5.1.14 | View list of feedbacks | 1d? | 2014-05-27 08:00 | 2014-05-27 17:00 | 0d |
| 95 | 5.1.15 | Import list of hospitals or clinics by Excel | 1d? | 2014-05-27 08:00 | 2014-05-27 17:00 | 0d |
| 96 | 5.1.16 | Create appointments online | 1d? | 2014-05-27 08:00 | 2014-05-27 17:00 | 0d |
| 97 | 5.1.17 | View list of appointments | 1d? | 2014-05-27 08:00 | 2014-05-27 17:00 | 0d |
| 98 | 5.1.18 | View administrator statistics | 1d? | 2014-05-27 08:00 | 2014-05-27 17:00 | 0d |
| 99 | 5.1.19 | View hospital statistics | 1d? | 2014-05-27 08:00 | 2014-05-27 17:00 | 0d |
| 100 | 5.1.20 | Create architecture diagram | 1d? | 2014-05-27 08:00 | 2014-05-27 17:00 | 0d |
| 101 | 5.2 | Integration test | 1d? | 2014-05-27 08:00 | 2014-05-27 17:00 | 0d |
| 102 | 5.3 | System test | 1d? | 2014-05-27 08:00 | 2014-05-27 17:00 | 0d |
| 103 | 5.4 | Create report 5 | 1d? | 2014-05-27 08:00 | 2014-05-27 17:00 | 0d |

| ID | WBS | Task | Duration | Start | Finish | Total slack |
| --- | --- | --- | --- | --- | --- | --- |
| 104 | 6 | **Prepare for preparation** | 1d? | 2014-05-27 08:00 | 2014-05-27 17:00 |  |
| 105 | 6.1 | Create report 6 | 1d? | 2014-05-27 08:00 | 2014-05-27 17:00 | 0d |
| 106 | 6.2 | Integrate reports | 1d? | 2014-05-27 08:00 | 2014-05-27 17:00 | 0d |
| 107 | 6.3 | Dummy presentation | 1d? | 2014-05-27 08:00 | 2014-05-27 17:00 | 0d |
